# Senior Project WBS

How a schedule from MS Project changed from version to version. A marks actual dates.

## Version 1 (saved 2013-05-30, file Senior Project WBS.mpp)

Note of the change: WBS Initial Commit

| ID | WBS | Task | Duration | Start | Finish | Predecessors | Total float |
| --- | --- | --- | --- | --- | --- | --- | --- |
| 1 | 1 | **Senior Project Demo** | 160.12d | 2013-05-12 | 2013-10-18 |  |  |
| 2 | 1.1 | **Design** | 49d | 2013-05-12 | 2013-06-29 |  | 111d |
| 3 |  | GDD | 3w | 2013-05-12 | 2013-06-01 |  | 111d |
| 4 |  | TDD | 4w | 2013-06-02 | 2013-06-29 | 3 | 111d |
| 5 | 1.2 | **Battle System** | 1d? | 2013-05-12 | 2013-05-12 |  | 159d |
| 6 |  | Turn Rotation | 1d? | 2013-05-12 | 2013-05-12 |  | 159d |
| 7 |  | Damage System | 1d? | 2013-05-12 | 2013-05-12 |  | 159d |
| 8 |  | Battle Effects | 1d? | 2013-05-12 | 2013-05-12 |  | 159d |
| 9 |  | Loot | 1d? | 2013-05-12 | 2013-05-12 |  | 159d |
| 10 |  | Experience | 1d? | 2013-05-12 | 2013-05-12 |  | 159d |
| 11 | 1.3 | **UI** | 1d? | 2013-05-12 | 2013-05-12 |  | 159d |
| 12 | 1.3.1 | **Screens** | 1d? | 2013-05-12 | 2013-05-12 |  | 159d |
| 13 | 1.3.1.1 | **Start** | 1d? | 2013-05-12 | 2013-05-12 |  | 159d |
| 14 |  | Start Button | 1d? | 2013-05-12 | 2013-05-12 |  | 159d |
| 15 |  | Exit Button | 1d? | 2013-05-12 | 2013-05-12 |  | 159d |
| 16 |  | Mute Button | 1d? | 2013-05-12 | 2013-05-12 |  | 159d |
| 17 |  | Background/Title Image | 1d? | 2013-05-12 | 2013-05-12 |  | 159d |
| 18 | 1.3.1.2 | **Gameplay** | 1d? | 2013-05-12 | 2013-05-12 |  | 159d |
| 19 | 1.3.1.2.1 | **HUD** | 1d? | 2013-05-12 | 2013-05-12 |  | 159d |
| 20 |  | Character Portrait | 1d? | 2013-05-12 | 2013-05-12 |  | 159d |
| 21 |  | Joystick | 1d? | 2013-05-12 | 2013-05-12 |  | 159d |
| 22 |  | Inventory Button | 1d? | 2013-05-12 | 2013-05-12 |  | 159d |
| 23 |  | Map Button | 1d? | 2013-05-12 | 2013-05-12 |  | 159d |
| 24 |  | Pause Popup | 1d? | 2013-05-12 | 2013-05-12 |  | 159d |
| 25 | 1.3.1.3 | **Battle** | 1d? | 2013-05-12 | 2013-05-12 |  | 159d |
| 26 |  | Enemy Positions | 1d? | 2013-05-12 | 2013-05-12 |  | 159d |
| 27 |  | Party Member Positions | 1d? | 2013-05-12 | 2013-05-12 |  | 159d |
| 28 |  | Status Bars | 1d? | 2013-05-12 | 2013-05-12 |  | 159d |
| 29 |  | Battle Menu | 1d? | 2013-05-12 | 2013-05-12 |  | 159d |
| 30 | 1.3.1.4 | **Inventory** | 1d? | 2013-05-12 | 2013-05-12 |  | 159d |
| 31 |  | Player Stats | 1d? | 2013-05-12 | 2013-05-12 |  | 159d |
| 32 |  | Player Equipped Items | 1d? | 2013-05-12 | 2013-05-12 |  | 159d |
| 33 |  | Reserve Inventory | 1d? | 2013-05-12 | 2013-05-12 |  | 159d |
| 34 |  | Store | 1d? | 2013-05-12 | 2013-05-12 |  | 159d |
| 35 |  | Character Tabs | 1d? | 2013-05-12 | 2013-05-12 |  | 159d |
| 36 | 1.4 | **Classes** | 1d? | 2013-05-12 | 2013-05-12 |  | 159d |
| 37 |  | Skills | 1d? | 2013-05-12 | 2013-05-12 |  | 159d |
| 38 |  | Attributes | 1d? | 2013-05-12 | 2013-05-12 |  | 159d |
| 39 |  | Sprites | 1d? | 2013-05-12 | 2013-05-12 |  | 159d |
| 40 | 1.5 | **Zones** | 1d? | 2013-05-12 | 2013-05-12 |  | 159d |
| 41 |  | Backgrounds | 1d? | 2013-05-12 | 2013-05-12 |  | 159d |
| 42 |  | World Map | 1d? | 2013-05-12 | 2013-05-12 |  | 159d |
| 43 |  | Spawning Enemies | 1d? | 2013-05-12 | 2013-05-12 |  | 159d |
| 44 |  | Interactable Store | 1d? | 2013-05-12 | 2013-05-12 |  | 159d |
| 45 |  | Interactable Inn | 1d? | 2013-05-12 | 2013-05-12 |  | 159d |
| 46 |  | NPCs | 1d? | 2013-05-12 | 2013-05-12 |  | 159d |
| 47 |  | Quests | 1d? | 2013-05-12 | 2013-05-12 |  | 159d |
| 48 |  | Bosses | 1d? | 2013-05-12 | 2013-05-12 |  | 159d |

## Version 2 (saved 2013-05-30, file Senior Project WBS.mpp)

Note of the change: Updated MPP file

Last finish 2013-10-18 → 2013-10-26 (+8d).

Added:

| ID | Task | Duration | Start | Finish | Predecessors |
| --- | --- | --- | --- | --- | --- |
| 5 | Learn AndEngine | 7w | 2013-05-12 | 2013-06-29 |  |
| 31 | Create Close Button | 0.25d | 2013-07-26 | 2013-07-26 | 30 |
| 32 | **Character Selection** | 1.75d | 2013-07-27 | 2013-07-28 |  |
| 33 | Create Class Tabs | 1d | 2013-07-27 | 2013-07-27 | 31 |
| 34 | Create Class Info Pane | 0.25d | 2013-07-28 | 2013-07-28 | 33 |
| 35 | Create Start Button | 0.25d | 2013-07-28 | 2013-07-28 | 34 |
| 36 | Create Close Button | 0.25d | 2013-07-28 | 2013-07-28 | 35 |
| 38 | **Create Warrior** | 21d | 2013-06-30 | 2013-07-20 |  |
| 39 | Create Skills | 9d | 2013-06-30 | 2013-07-08 | 3, 4, 5 |
| 40 | Create Attributes | 9d | 2013-07-09 | 2013-07-17 | 39 |
| 41 | Create Sprites | 3d | 2013-07-18 | 2013-07-20 | 40 |
| 42 | **Create Ranger** | 7d | 2013-07-21 | 2013-07-27 |  |
| 43 | Create Skills | 2d | 2013-07-21 | 2013-07-22 | 41 |
| 44 | Create Attributes | 2d | 2013-07-23 | 2013-07-24 | 43 |
| 45 | Create Sprites | 3d | 2013-07-25 | 2013-07-27 | 44 |
| 46 | **Create Cleric** | 7d | 2013-07-28 | 2013-08-03 |  |
| 65 | Integration/Testing/Polishing | 4w | 2013-09-29 | 2013-10-26 | 64 |

Changed:

| ID | Task | Start | Finish | Duration | Total float | Predecessors | Other |
| --- | --- | --- | --- | --- | --- | --- | --- |
| 1 | **Senior Project Demo** |  | 2013-10-18 → 2013-10-26 (+8d) | 160.12d → 168d | none → 0d |  |  |
| 3 | Create GDD |  |  |  | 111d → 0d |  | was named GDD |
| 4 | Create TDD |  |  |  | 111d → 0d |  | was named TDD |
| 6 | **UI** | 2013-05-12 → 2013-06-30 (+49d) | 2013-05-12 → 2013-07-28 (+77d) | 1d? → 28.75d | 159d → 6.25d |  |  |
| 7 | **Screens** | 2013-05-12 → 2013-06-30 (+49d) | 2013-05-12 → 2013-07-28 (+77d) | 1d? → 28.75d | 159d → 6.25d |  |  |
| 8 | **Start** | 2013-05-12 → 2013-06-30 (+49d) | 2013-05-12 → 2013-07-01 (+50d) | 1d? → 1.75d | 159d → 6.25d |  |  |
| 9 | Create Start Button | 2013-05-12 → 2013-06-30 (+49d) | 2013-05-12 → 2013-06-30 (+49d) | 1d? → 0.25d | 159d → 6.25d | none → 3, 5 | was named Start Button |
| 10 | Create Exit Button | 2013-05-12 → 2013-06-30 (+49d) | 2013-05-12 → 2013-06-30 (+49d) | 1d? → 0.25d | 159d → 6.25d | none → 9 | was named Exit Button |
| 11 | Create Mute Button | 2013-05-12 → 2013-06-30 (+49d) | 2013-05-12 → 2013-06-30 (+49d) | 1d? → 0.25d | 159d → 6.25d | none → 10 | was named Mute Button |
| 12 | Create Background/Title Image | 2013-05-12 → 2013-06-30 (+49d) | 2013-05-12 → 2013-07-01 (+50d) | 1d? → 1d | 159d → 6.25d | none → 11 | was named Background/Title Image |
| 13 | **Gameplay** | 2013-05-12 → 2013-07-01 (+50d) | 2013-05-12 → 2013-07-06 (+55d) | 1d? → 5.25d | 159d → 6.25d |  |  |
| 14 | **HUD** | 2013-05-12 → 2013-07-01 (+50d) | 2013-05-12 → 2013-07-06 (+55d) | 1d? → 5.25d | 159d → 6.25d |  |  |
| 15 | Create Character Portrait | 2013-05-12 → 2013-07-01 (+50d) | 2013-05-12 → 2013-07-02 (+51d) | 1d? → 1d | 159d → 6.25d | none → 12 | was named Character Portrait |
| 16 | Create Joystick | 2013-05-12 → 2013-07-02 (+51d) | 2013-05-12 → 2013-07-03 (+52d) | 1d? → 1d | 159d → 6.25d | none → 15 | was named Joystick |
| 17 | Create Inventory Button | 2013-05-12 → 2013-07-03 (+52d) | 2013-05-12 → 2013-07-04 (+53d) | 1d? → 1.25d | 159d → 6.25d | none → 16 | was named Inventory Button |
| 18 | Create Map Button | 2013-05-12 → 2013-07-05 (+54d) | 2013-05-12 → 2013-07-05 (+54d) | 1d? → 1d | 159d → 6.25d | none → 17 | was named Map Button |
| 19 | Create Pause Popup | 2013-05-12 → 2013-07-06 (+55d) | 2013-05-12 → 2013-07-06 (+55d) | 1d? → 1d | 159d → 6.25d | none → 18 | was named Pause Popup |
| 20 | **Battle** | 2013-05-12 → 2013-07-07 (+56d) | 2013-05-12 → 2013-07-13 (+62d) | 1d? → 7d | 159d → 6.25d |  |  |
| 21 | Create Enemy Positions | 2013-05-12 → 2013-07-07 (+56d) | 2013-05-12 → 2013-07-09 (+58d) | 1d? → 3d | 159d → 6.25d | none → 19 | was named Enemy Positions |
| 22 | Create Party Member Positions | 2013-05-12 → 2013-07-10 (+59d) | 2013-05-12 → 2013-07-10 (+59d) | 1d? → 1d | 159d → 6.25d | none → 21 | was named Party Member Positions |
| 23 | Create Status Bars | 2013-05-12 → 2013-07-11 (+60d) | 2013-05-12 → 2013-07-11 (+60d) | 1d? → 1d | 159d → 6.25d | none → 22 | was named Status Bars |
| 24 | Create Battle Menu | 2013-05-12 → 2013-07-12 (+61d) | 2013-05-12 → 2013-07-13 (+62d) | 1d? → 2d | 159d → 6.25d | none → 23 | was named Battle Menu |
| 25 | **Inventory** | 2013-05-12 → 2013-07-14 (+63d) | 2013-05-12 → 2013-07-26 (+75d) | 1d? → 13d | 159d → 6.25d |  |  |
| 26 | Create Player Stats | 2013-05-12 → 2013-07-14 (+63d) | 2013-05-12 → 2013-07-14 (+63d) | 1d? → 1d | 159d → 6.25d | none → 24 | was named Player Stats |
| 27 | Create Player Equipped Items | 2013-05-12 → 2013-07-15 (+64d) | 2013-05-12 → 2013-07-17 (+66d) | 1d? → 3d | 159d → 6.25d | none → 26 | was named Player Equipped Items |
| 28 | Create Reserve Inventory | 2013-05-12 → 2013-07-18 (+67d) | 2013-05-12 → 2013-07-21 (+70d) | 1d? → 4d | 159d → 6.25d | none → 27 | was named Reserve Inventory |
| 29 | Create Store | 2013-05-12 → 2013-07-22 (+71d) | 2013-05-12 → 2013-07-25 (+74d) | 1d? → 4d | 159d → 6.25d | none → 28 | was named Store |
| 30 | Create Character Tabs | 2013-05-12 → 2013-07-26 (+75d) | 2013-05-12 → 2013-07-26 (+75d) | 1d? → 0.75d | 159d → 6.25d | none → 29 | was named Character Tabs |
| 37 | **Classes** | 2013-05-12 → 2013-06-30 (+49d) | 2013-05-12 → 2013-08-03 (+83d) | 1d? → 35d | 159d → 0d |  |  |
| 47 | Create Skills | 2013-05-12 → 2013-07-28 (+77d) | 2013-05-12 → 2013-07-29 (+78d) | 1d? → 2d | 159d → 0d | none → 45 | was named Skills |
| 48 | Create Attributes | 2013-05-12 → 2013-07-30 (+79d) | 2013-05-12 → 2013-07-31 (+80d) | 1d? → 2d | 159d → 0d | none → 47 | was named Attributes |
| 49 | Create Sprites | 2013-05-12 → 2013-08-01 (+81d) | 2013-05-12 → 2013-08-03 (+83d) | 1d? → 3d | 159d → 0d | none → 48 | was named Sprites |
| 50 | **Zones** | 2013-05-12 → 2013-06-30 (+49d) | 2013-05-12 → 2013-08-03 (+83d) | 1d? → 35d | 159d → 0d |  |  |
| 51 | Create Terrain Tiles | 2013-05-12 → 2013-06-30 (+49d) | 2013-05-12 → 2013-07-13 (+62d) | 1d? → 2w | 159d → 0d | none → 3, 4, 5 | was named Backgrounds |
| 52 | Create World Map | 2013-05-12 → 2013-07-14 (+63d) | 2013-05-12 → 2013-07-15 (+64d) | 1d? → 2d | 159d → 0d | none → 51 | was named World Map |
| 53 | Create Spawning Enemies | 2013-05-12 → 2013-07-16 (+65d) | 2013-05-12 → 2013-07-18 (+67d) | 1d? → 3d | 159d → 0d | none → 52 | was named Spawning Enemies |
| 54 | Create Interactable Store | 2013-05-12 → 2013-07-19 (+68d) | 2013-05-12 → 2013-07-19 (+68d) | 1d? → 1d | 159d → 0d | none → 53 | was named Interactable Store |
| 55 | Create Interactable Inn | 2013-05-12 → 2013-07-20 (+69d) | 2013-05-12 → 2013-07-20 (+69d) | 1d? → 1d | 159d → 0d | none → 54 | was named Interactable Inn |
| 56 | Create NPCs | 2013-05-12 → 2013-07-21 (+70d) | 2013-05-12 → 2013-07-27 (+76d) | 1d? → 1w | 159d → 0d | none → 55 | was named NPCs |
| 57 | Create Quests | 2013-05-12 → 2013-07-28 (+77d) | 2013-05-12 → 2013-07-30 (+79d) | 1d? → 3d | 159d → 0d | none → 56 | was named Quests |
| 58 | Create Bosses | 2013-05-12 → 2013-07-31 (+80d) | 2013-05-12 → 2013-08-03 (+83d) | 1d? → 4d | 159d → 0d | none → 57 | was named Bosses |
| 59 | **Battle System** | 2013-05-12 → 2013-08-04 (+84d) | 2013-05-12 → 2013-09-28 (+139d) | 1d? → 56d | 159d → 0d |  |  |
| 60 | Create Turn Rotation | 2013-05-12 → 2013-08-04 (+84d) | 2013-05-12 → 2013-08-10 (+90d) | 1d? → 1w | 159d → 0d | none → 58, 49, 36 | was named Turn Rotation |
| 61 | Create Damage System | 2013-05-12 → 2013-08-11 (+91d) | 2013-05-12 → 2013-08-17 (+97d) | 1d? → 1w | 159d → 0d | none → 60 | was named Damage System |
| 62 | Create Battle Effects | 2013-05-12 → 2013-08-18 (+98d) | 2013-05-12 → 2013-08-31 (+111d) | 1d? → 2w | 159d → 0d | none → 61 | was named Battle Effects |
| 63 | Create Loot System | 2013-05-12 → 2013-09-01 (+112d) | 2013-05-12 → 2013-09-14 (+125d) | 1d? → 2w | 159d → 0d | none → 62 | was named Loot |
| 64 | Create Experience System | 2013-05-12 → 2013-09-15 (+126d) | 2013-05-12 → 2013-09-28 (+139d) | 1d? → 2w | 159d → 0d | none → 63 | was named Experience |

## Version 3 (saved 2013-06-06, file Senior Project Plan.mpp)

Note of the change: Updated Plan/WBS and Renaming

Last finish stays 2013-10-26.

Changed:

| ID | Task | Other |
| --- | --- | --- |
| 3 | Create GDD | resources none → Lead Programmer; Programmer 1; Programmer 2; Programmer 3; Programmer 4; UI Programmer |
| 4 | Create TDD | resources none → Lead Programmer; Programmer 1; Programmer 2; Programmer 3; Programmer 4; UI Programmer |
| 9 | Create Start Button | resources none → UI Programmer |
| 10 | Create Exit Button | resources none → UI Programmer |
| 11 | Create Mute Button | resources none → UI Programmer |
| 12 | Create Background/Title Image | resources none → UI Programmer |
| 15 | Create Character Portrait | resources none → UI Programmer |
| 16 | Create Joystick | resources none → UI Programmer |
| 17 | Create Inventory Button | resources none → UI Programmer |
| 18 | Create Map Button | resources none → UI Programmer |
| 19 | Create Pause Popup | resources none → UI Programmer |
| 21 | Create Enemy Positions | resources none → UI Programmer |
| 22 | Create Party Member Positions | resources none → UI Programmer |
| 23 | Create Status Bars | resources none → UI Programmer |
| 24 | Create Battle Menu | resources none → UI Programmer |
| 26 | Create Player Stats | resources none → UI Programmer |
| 27 | Create Player Equipped Items | resources none → UI Programmer |
| 28 | Create Reserve Inventory | resources none → UI Programmer |
| 29 | Create Store | resources none → UI Programmer |
| 30 | Create Character Tabs | resources none → UI Programmer |
| 31 | Create Close Button | resources none → UI Programmer |
| 33 | Create Class Tabs | resources none → UI Programmer |
| 34 | Create Class Info Pane | resources none → UI Programmer |
| 35 | Create Start Button | resources none → UI Programmer |
| 36 | Create Close Button | resources none → UI Programmer |
| 39 | Create Skills | resources none → Programmer 3; Programmer 1; Lead Programmer |
| 40 | Create Attributes | resources none → Programmer 3; Programmer 1; Lead Programmer |
| 41 | Create Sprites | resources none → Artist 1 |
| 43 | Create Skills | resources none → Programmer 3; Programmer 1; Lead Programmer |
| 44 | Create Attributes | resources none → Programmer 3; Programmer 1; Lead Programmer |
| 45 | Create Sprites | resources none → Artist 1 |
| 47 | Create Skills | resources none → Programmer 3; Programmer 1; Lead Programmer |
| 48 | Create Attributes | resources none → Programmer 3; Programmer 1; Lead Programmer |
| 49 | Create Sprites | resources none → Artist 1 |
| 51 | Create Terrain Tiles | resources none → Programmer 2; Programmer 4 |
| 52 | Create World Map | resources none → Programmer 2; Programmer 4 |
| 53 | Create Spawning Enemies | resources none → Programmer 2; Programmer 4 |
| 54 | Create Interactable Store | resources none → Programmer 2; Programmer 4 |
| 55 | Create Interactable Inn | resources none → Programmer 2; Programmer 4 |
| 56 | Create NPCs | resources none → Programmer 2; Programmer 4 |
| 57 | Create Quests | resources none → Programmer 2; Programmer 4 |
| 58 | Create Bosses | resources none → Programmer 2; Programmer 4 |
| 60 | Create Turn Rotation | resources none → Lead Programmer; Programmer 1; Programmer 2; Programmer 3; Programmer 4; Team Lead |
| 61 | Create Damage System | resources none → Lead Programmer; Programmer 1; Programmer 2; Programmer 3; Programmer 4; Team Lead |
| 62 | Create Battle Effects | resources none → Lead Programmer; Programmer 1; Programmer 2; Programmer 3; Programmer 4; Team Lead |
| 63 | Create Loot System | resources none → Lead Programmer; Programmer 1; Programmer 2; Programmer 3; Programmer 4; Team Lead |
| 64 | Create Experience System | resources none → Lead Programmer; Programmer 1; Programmer 2; Programmer 3; Programmer 4; Team Lead |
| 65 | Integration/Testing/Polishing | resources none → Lead Programmer; Programmer 1; Programmer 2; Programmer 3; Programmer 4; Team Lead |

## Version 4 (saved 2013-06-13, file Senior Project Plan_Updated.mpp)

Note of the change: Updated Project Plan

Last finish 2013-10-26 → 2013-10-25 (-1d).

Changed:

| ID | Task | Start | Finish | Duration | Total float | Other |
| --- | --- | --- | --- | --- | --- | --- |
| 1 | **Senior Project Demo** | 2013-05-12 → 2013-05-13 (+1d) | 2013-10-26 → 2013-10-25 (-1d) | 168d → 120d |  |  |
| 2 | **Design** | 2013-05-12 → 2013-05-13 (+1d) | 2013-06-29 → 2013-06-28 (-1d) | 49d → 35d |  |  |
| 3 | Create GDD | 2013-05-12 → 2013-05-13 (+1d) | 2013-06-01 → 2013-05-31 (-1d) | 3w → 15d |  |  |
| 4 | Create TDD | 2013-06-02 → 2013-06-03 (+1d) | 2013-06-29 → 2013-06-28 (-1d) | 4w → 20d |  |  |
| 5 | Learn AndEngine | 2013-05-12 → 2013-05-13 (+1d) | 2013-06-29 → 2013-06-28 (-1d) | 7w → 35d |  |  |
| 6 | **UI** | 2013-06-30 → 2013-07-01 (+1d) | 2013-07-28 → 2013-08-08 (+11d) |  | 6.25d → 0.25d |  |
| 7 | **Screens** | 2013-06-30 → 2013-07-01 (+1d) | 2013-07-28 → 2013-08-08 (+11d) |  | 6.25d → 0.25d |  |
| 8 | **Start** | 2013-06-30 → 2013-07-01 (+1d) | 2013-07-01 → 2013-07-02 (+1d) |  | 6.25d → 0.25d |  |
| 9 | Create Start Button | 2013-06-30 → 2013-07-01 (+1d) | 2013-06-30 → 2013-07-01 (+1d) |  | 6.25d → 0.25d |  |
| 10 | Create Exit Button | 2013-06-30 → 2013-07-01 (+1d) | 2013-06-30 → 2013-07-01 (+1d) |  | 6.25d → 0.25d |  |
| 11 | Create Mute Button | 2013-06-30 → 2013-07-01 (+1d) | 2013-06-30 → 2013-07-01 (+1d) |  | 6.25d → 0.25d |  |
| 12 | Create Background/Title Image | 2013-06-30 → 2013-07-01 (+1d) | 2013-07-01 → 2013-07-02 (+1d) |  | 6.25d → 0.25d |  |
| 13 | **Gameplay** | 2013-07-01 → 2013-07-02 (+1d) | 2013-07-06 → 2013-07-09 (+3d) |  | 6.25d → 0.25d |  |
| 14 | **HUD** | 2013-07-01 → 2013-07-02 (+1d) | 2013-07-06 → 2013-07-09 (+3d) |  | 6.25d → 0.25d |  |
| 15 | Create Character Portrait | 2013-07-01 → 2013-07-02 (+1d) | 2013-07-02 → 2013-07-03 (+1d) |  | 6.25d → 0.25d |  |
| 16 | Create Joystick | 2013-07-02 → 2013-07-03 (+1d) | 2013-07-03 → 2013-07-04 (+1d) |  | 6.25d → 0.25d |  |
| 17 | Create Inventory Button | 2013-07-03 → 2013-07-04 (+1d) | 2013-07-04 → 2013-07-05 (+1d) |  | 6.25d → 0.25d |  |
| 18 | Create Map Button | 2013-07-05 → 2013-07-08 (+3d) | 2013-07-05 → 2013-07-08 (+3d) |  | 6.25d → 0.25d |  |
| 19 | Create Pause Popup | 2013-07-06 → 2013-07-09 (+3d) | 2013-07-06 → 2013-07-09 (+3d) |  | 6.25d → 0.25d |  |
| 20 | **Battle** | 2013-07-07 → 2013-07-10 (+3d) | 2013-07-13 → 2013-07-18 (+5d) |  | 6.25d → 0.25d |  |
| 21 | Create Enemy Positions | 2013-07-07 → 2013-07-10 (+3d) | 2013-07-09 → 2013-07-12 (+3d) |  | 6.25d → 0.25d |  |
| 22 | Create Party Member Positions | 2013-07-10 → 2013-07-15 (+5d) | 2013-07-10 → 2013-07-15 (+5d) |  | 6.25d → 0.25d |  |
| 23 | Create Status Bars | 2013-07-11 → 2013-07-16 (+5d) | 2013-07-11 → 2013-07-16 (+5d) |  | 6.25d → 0.25d |  |
| 24 | Create Battle Menu | 2013-07-12 → 2013-07-17 (+5d) | 2013-07-13 → 2013-07-18 (+5d) |  | 6.25d → 0.25d |  |
| 25 | **Inventory** | 2013-07-14 → 2013-07-19 (+5d) | 2013-07-26 → 2013-08-06 (+11d) |  | 6.25d → 0.25d |  |
| 26 | Create Player Stats | 2013-07-14 → 2013-07-19 (+5d) | 2013-07-14 → 2013-07-19 (+5d) |  | 6.25d → 0.25d |  |
| 27 | Create Player Equipped Items | 2013-07-15 → 2013-07-22 (+7d) | 2013-07-17 → 2013-07-24 (+7d) |  | 6.25d → 0.25d |  |
| 28 | Create Reserve Inventory | 2013-07-18 → 2013-07-25 (+7d) | 2013-07-21 → 2013-07-30 (+9d) |  | 6.25d → 0.25d |  |
| 29 | Create Store | 2013-07-22 → 2013-07-31 (+9d) | 2013-07-25 → 2013-08-05 (+11d) |  | 6.25d → 0.25d |  |
| 30 | Create Character Tabs | 2013-07-26 → 2013-08-06 (+11d) | 2013-07-26 → 2013-08-06 (+11d) |  | 6.25d → 0.25d |  |
| 31 | Create Close Button | 2013-07-26 → 2013-08-06 (+11d) | 2013-07-26 → 2013-08-06 (+11d) |  | 6.25d → 0.25d |  |
| 32 | **Character Selection** | 2013-07-27 → 2013-08-07 (+11d) | 2013-07-28 → 2013-08-08 (+11d) |  | 6.25d → 0.25d |  |
| 33 | Create Class Tabs | 2013-07-27 → 2013-08-07 (+11d) | 2013-07-27 → 2013-08-07 (+11d) |  | 6.25d → 0.25d |  |
| 34 | Create Class Info Pane | 2013-07-28 → 2013-08-08 (+11d) | 2013-07-28 → 2013-08-08 (+11d) |  | 6.25d → 0.25d |  |
| 35 | Create Start Button | 2013-07-28 → 2013-08-08 (+11d) | 2013-07-28 → 2013-08-08 (+11d) |  | 6.25d → 0.25d |  |
| 36 | Create Close Button | 2013-07-28 → 2013-08-08 (+11d) | 2013-07-28 → 2013-08-08 (+11d) |  | 6.25d → 0.25d |  |
| 37 | **Classes** | 2013-06-30 → 2013-07-01 (+1d) | 2013-08-03 → 2013-08-02 (-1d) | 35d → 25d | 0d → 4d |  |
| 38 | **Create Warrior** | 2013-06-30 → 2013-07-01 (+1d) | 2013-07-20 → 2013-07-19 (-1d) | 21d → 15d | 0d → 4d |  |
| 39 | Create Skills | 2013-06-30 → 2013-07-01 (+1d) |  | 9d → 6d | 0d → 4d |  |
| 40 | Create Attributes |  | 2013-07-17 → 2013-07-16 (-1d) | 9d → 6d | 0d → 4d |  |
| 41 | Create Sprites | 2013-07-18 → 2013-07-17 (-1d) | 2013-07-20 → 2013-07-19 (-1d) |  | 0d → 4d |  |
| 42 | **Create Ranger** | 2013-07-21 → 2013-07-22 (+1d) | 2013-07-27 → 2013-07-26 (-1d) | 7d → 5d | 0d → 4d |  |
| 43 | Create Skills | 2013-07-21 → 2013-07-22 (+1d) |  | 2d → 1d | 0d → 4d |  |
| 44 | Create Attributes |  | 2013-07-24 → 2013-07-23 (-1d) | 2d → 1d | 0d → 4d |  |
| 45 | Create Sprites | 2013-07-25 → 2013-07-24 (-1d) | 2013-07-27 → 2013-07-26 (-1d) |  | 0d → 4d |  |
| 46 | **Create Cleric** | 2013-07-28 → 2013-07-29 (+1d) | 2013-08-03 → 2013-08-02 (-1d) | 7d → 5d | 0d → 4d |  |
| 47 | Create Skills | 2013-07-28 → 2013-07-29 (+1d) |  | 2d → 1d | 0d → 4d |  |
| 48 | Create Attributes |  | 2013-07-31 → 2013-07-30 (-1d) | 2d → 1d | 0d → 4d |  |
| 49 | Create Sprites | 2013-08-01 → 2013-07-31 (-1d) | 2013-08-03 → 2013-08-02 (-1d) |  | 0d → 4d |  |
| 50 | **Zones** | 2013-06-30 → 2013-07-01 (+1d) | 2013-08-03 → 2013-08-08 (+5d) | 35d → 29d |  |  |
| 51 | Create Terrain Tiles | 2013-06-30 → 2013-07-01 (+1d) | 2013-07-13 → 2013-07-12 (-1d) | 2w → 10d |  |  |
| 52 | Create World Map | 2013-07-14 → 2013-07-15 (+1d) | 2013-07-15 → 2013-07-16 (+1d) |  |  |  |
| 53 | Create Spawning Enemies | 2013-07-16 → 2013-07-17 (+1d) | 2013-07-18 → 2013-07-19 (+1d) |  |  |  |
| 54 | Create Interactable Store | 2013-07-19 → 2013-07-22 (+3d) | 2013-07-19 → 2013-07-22 (+3d) |  |  |  |
| 55 | Create Interactable Inn | 2013-07-20 → 2013-07-23 (+3d) | 2013-07-20 → 2013-07-23 (+3d) |  |  |  |
| 56 | Create NPCs | 2013-07-21 → 2013-07-24 (+3d) | 2013-07-27 → 2013-07-30 (+3d) | 1w → 5d |  |  |
| 57 | Create Quests | 2013-07-28 → 2013-07-31 (+3d) | 2013-07-30 → 2013-08-02 (+3d) |  |  |  |
| 58 | Create Bosses | 2013-07-31 → 2013-08-05 (+5d) | 2013-08-03 → 2013-08-08 (+5d) |  |  |  |
| 59 | **Battle System** | 2013-08-04 → 2013-08-09 (+5d) | 2013-09-28 → 2013-10-03 (+5d) | 56d → 40d |  |  |
| 60 | Create Turn Rotation | 2013-08-04 → 2013-08-09 (+5d) | 2013-08-10 → 2013-08-15 (+5d) | 1w → 5d |  | resources Lead Programmer; Programmer 1; Programmer 2; Programmer 3; Programmer 4; Team Lead → Lead Programmer; Programmer 1; Programmer 2; Programmer 3; Programmer 4 |
| 61 | Create Damage System | 2013-08-11 → 2013-08-16 (+5d) | 2013-08-17 → 2013-08-22 (+5d) | 1w → 5d |  | resources Lead Programmer; Programmer 1; Programmer 2; Programmer 3; Programmer 4; Team Lead → Lead Programmer; Programmer 1; Programmer 2; Programmer 3; Programmer 4 |
| 62 | Create Battle Effects | 2013-08-18 → 2013-08-23 (+5d) | 2013-08-31 → 2013-09-05 (+5d) | 2w → 10d |  | resources Lead Programmer; Programmer 1; Programmer 2; Programmer 3; Programmer 4; Team Lead → Lead Programmer; Programmer 1; Programmer 2; Programmer 3; Programmer 4 |
| 63 | Create Loot System | 2013-09-01 → 2013-09-06 (+5d) | 2013-09-14 → 2013-09-19 (+5d) | 2w → 10d |  | resources Lead Programmer; Programmer 1; Programmer 2; Programmer 3; Programmer 4; Team Lead → Lead Programmer; Programmer 1; Programmer 2; Programmer 3; Programmer 4 |
| 64 | Create Experience System | 2013-09-15 → 2013-09-20 (+5d) | 2013-09-28 → 2013-10-03 (+5d) | 2w → 10d |  | resources Lead Programmer; Programmer 1; Programmer 2; Programmer 3; Programmer 4; Team Lead → Lead Programmer; Programmer 1; Programmer 2; Programmer 3; Programmer 4 |
| 65 | Integration/Testing/Polishing | 2013-09-29 → 2013-10-04 (+5d) | 2013-10-26 → 2013-10-25 (-1d) | 4w → 16d |  | resources Lead Programmer; Programmer 1; Programmer 2; Programmer 3; Programmer 4; Team Lead → Lead Programmer; Programmer 1; Programmer 2; Programmer 3; Programmer 4 |

## Version 5 (saved 2013-07-16, file Senior Project Plan_Updated.mpp)

Note of the change: Team Meeting - 7-15

Last finish stays 2013-10-25.

Added:

| ID | Task | Duration | Start | Finish | Constraint | Resources |
| --- | --- | --- | --- | --- | --- | --- |
| 66 | **Team Meeting** | 79.38d | 2013-07-08 09:00 | 2013-10-25 12:00 |  | Lead Programmer; Programmer 1; Programmer 2; Programmer 3; Programmer 4; UI Programmer |
| 67 | Team Meeting 1 | 3h | 2013-07-08 09:00 | 2013-07-08 12:00 | start no earlier than 2013-07-08 09:00 |  |
| 68 | Team Meeting 2 | 3h | 2013-07-12 09:00 | 2013-07-12 12:00 | start no earlier than 2013-07-12 09:00 |  |
| 69 | Team Meeting 3 | 3h | 2013-07-15 09:00 | 2013-07-15 12:00 | start no earlier than 2013-07-15 09:00 |  |
| 70 | Team Meeting 4 | 3h | 2013-07-19 09:00 | 2013-07-19 12:00 | start no earlier than 2013-07-19 09:00 |  |
| 71 | Team Meeting 5 | 3h | 2013-07-22 09:00 | 2013-07-22 12:00 | start no earlier than 2013-07-22 09:00 |  |
| 72 | Team Meeting 6 | 3h | 2013-07-26 09:00 | 2013-07-26 12:00 | start no earlier than 2013-07-26 09:00 |  |
| 73 | Team Meeting 7 | 3h | 2013-07-29 09:00 | 2013-07-29 12:00 | start no earlier than 2013-07-29 09:00 |  |
| 74 | Team Meeting 8 | 3h | 2013-08-02 09:00 | 2013-08-02 12:00 | start no earlier than 2013-08-02 09:00 |  |
| 75 | Team Meeting 9 | 3h | 2013-08-05 09:00 | 2013-08-05 12:00 | start no earlier than 2013-08-05 09:00 |  |
| 76 | Team Meeting 10 | 3h | 2013-08-09 09:00 | 2013-08-09 12:00 | start no earlier than 2013-08-09 09:00 |  |
| 77 | Team Meeting 11 | 3h | 2013-08-12 09:00 | 2013-08-12 12:00 | start no earlier than 2013-08-12 09:00 |  |
| 78 | Team Meeting 12 | 3h | 2013-08-16 09:00 | 2013-08-16 12:00 | start no earlier than 2013-08-16 09:00 |  |
| 79 | Team Meeting 13 | 3h | 2013-08-19 09:00 | 2013-08-19 12:00 | start no earlier than 2013-08-19 09:00 |  |
| 80 | Team Meeting 14 | 3h | 2013-08-23 09:00 | 2013-08-23 12:00 | start no earlier than 2013-08-23 09:00 |  |
| 81 | Team Meeting 15 | 3h | 2013-08-26 09:00 | 2013-08-26 12:00 | start no earlier than 2013-08-26 09:00 |  |
| 82 | Team Meeting 16 | 3h | 2013-08-30 09:00 | 2013-08-30 12:00 | start no earlier than 2013-08-30 09:00 |  |
| 83 | Team Meeting 17 | 3h | 2013-09-02 09:00 | 2013-09-02 12:00 | start no earlier than 2013-09-02 09:00 |  |
| 84 | Team Meeting 18 | 3h | 2013-09-06 09:00 | 2013-09-06 12:00 | start no earlier than 2013-09-06 09:00 |  |
| 85 | Team Meeting 19 | 3h | 2013-09-09 09:00 | 2013-09-09 12:00 | start no earlier than 2013-09-09 09:00 |  |
| 86 | Team Meeting 20 | 3h | 2013-09-13 09:00 | 2013-09-13 12:00 | start no earlier than 2013-09-13 09:00 |  |
| 87 | Team Meeting 21 | 3h | 2013-09-16 09:00 | 2013-09-16 12:00 | start no earlier than 2013-09-16 09:00 |  |
| 88 | Team Meeting 22 | 3h | 2013-09-20 09:00 | 2013-09-20 12:00 | start no earlier than 2013-09-20 09:00 |  |
| 89 | Team Meeting 23 | 3h | 2013-09-23 09:00 | 2013-09-23 12:00 | start no earlier than 2013-09-23 09:00 |  |
| 90 | Team Meeting 24 | 3h | 2013-09-27 09:00 | 2013-09-27 12:00 | start no earlier than 2013-09-27 09:00 |  |
| 91 | Team Meeting 25 | 3h | 2013-09-30 09:00 | 2013-09-30 12:00 | start no earlier than 2013-09-30 09:00 |  |
| 92 | Team Meeting 26 | 3h | 2013-10-04 09:00 | 2013-10-04 12:00 | start no earlier than 2013-10-04 09:00 |  |
| 93 | Team Meeting 27 | 3h | 2013-10-07 09:00 | 2013-10-07 12:00 | start no earlier than 2013-10-07 09:00 |  |
| 94 | Team Meeting 28 | 3h | 2013-10-11 09:00 | 2013-10-11 12:00 | start no earlier than 2013-10-11 09:00 |  |
| 95 | Team Meeting 29 | 3h | 2013-10-14 09:00 | 2013-10-14 12:00 | start no earlier than 2013-10-14 09:00 |  |
| 96 | Team Meeting 30 | 3h | 2013-10-18 09:00 | 2013-10-18 12:00 | start no earlier than 2013-10-18 09:00 |  |
| 97 | Team Meeting 31 | 3h | 2013-10-21 09:00 | 2013-10-21 12:00 | start no earlier than 2013-10-21 09:00 |  |
| 98 | Team Meeting 32 | 3h | 2013-10-25 09:00 | 2013-10-25 12:00 | start no earlier than 2013-10-25 09:00 |  |

Changed:

| ID | Task | Start | Finish |
| --- | --- | --- | --- |
| 1 | **Senior Project Demo** | 2013-05-13 → 2013-05-13 08:00 | 2013-10-25 → 2013-10-25 17:00 |
| 2 | **Design** | 2013-05-13 → 2013-05-13 08:00 | 2013-06-28 → 2013-06-28 17:00 |
| 3 | Create GDD | 2013-05-13 → 2013-05-13 08:00 | 2013-05-31 → 2013-05-31 17:00 |
| 4 | Create TDD | 2013-06-03 → 2013-06-03 08:00 | 2013-06-28 → 2013-06-28 17:00 |
| 5 | Learn AndEngine | 2013-05-13 → 2013-05-13 08:00 | 2013-06-28 → 2013-06-28 17:00 |
| 6 | **UI** | 2013-07-01 → 2013-07-01 08:00 | 2013-08-08 → 2013-08-08 15:00 |
| 7 | **Screens** | 2013-07-01 → 2013-07-01 08:00 | 2013-08-08 → 2013-08-08 15:00 |
| 8 | **Start** | 2013-07-01 → 2013-07-01 08:00 | 2013-07-02 → 2013-07-02 15:00 |
| 9 | Create Start Button | 2013-07-01 → 2013-07-01 08:00 | 2013-07-01 → 2013-07-01 10:00 |
| 10 | Create Exit Button | 2013-07-01 → 2013-07-01 10:00 | 2013-07-01 → 2013-07-01 12:00 |
| 11 | Create Mute Button | 2013-07-01 → 2013-07-01 13:00 | 2013-07-01 → 2013-07-01 15:00 |
| 12 | Create Background/Title Image | 2013-07-01 → 2013-07-01 15:00 | 2013-07-02 → 2013-07-02 15:00 |
| 13 | **Gameplay** | 2013-07-02 → 2013-07-02 15:00 | 2013-07-09 → 2013-07-09 17:00 |
| 14 | **HUD** | 2013-07-02 → 2013-07-02 15:00 | 2013-07-09 → 2013-07-09 17:00 |
| 15 | Create Character Portrait | 2013-07-02 → 2013-07-02 15:00 | 2013-07-03 → 2013-07-03 15:00 |
| 16 | Create Joystick | 2013-07-03 → 2013-07-03 15:00 | 2013-07-04 → 2013-07-04 15:00 |
| 17 | Create Inventory Button | 2013-07-04 → 2013-07-04 15:00 | 2013-07-05 → 2013-07-05 17:00 |
| 18 | Create Map Button | 2013-07-08 → 2013-07-08 08:00 | 2013-07-08 → 2013-07-08 17:00 |
| 19 | Create Pause Popup | 2013-07-09 → 2013-07-09 08:00 | 2013-07-09 → 2013-07-09 17:00 |
| 20 | **Battle** | 2013-07-10 → 2013-07-10 08:00 | 2013-07-18 → 2013-07-18 17:00 |
| 21 | Create Enemy Positions | 2013-07-10 → 2013-07-10 08:00 | 2013-07-12 → 2013-07-12 17:00 |
| 22 | Create Party Member Positions | 2013-07-15 → 2013-07-15 08:00 | 2013-07-15 → 2013-07-15 17:00 |
| 23 | Create Status Bars | 2013-07-16 → 2013-07-16 08:00 | 2013-07-16 → 2013-07-16 17:00 |
| 24 | Create Battle Menu | 2013-07-17 → 2013-07-17 08:00 | 2013-07-18 → 2013-07-18 17:00 |
| 25 | **Inventory** | 2013-07-19 → 2013-07-19 08:00 | 2013-08-06 → 2013-08-06 17:00 |
| 26 | Create Player Stats | 2013-07-19 → 2013-07-19 08:00 | 2013-07-19 → 2013-07-19 17:00 |
| 27 | Create Player Equipped Items | 2013-07-22 → 2013-07-22 08:00 | 2013-07-24 → 2013-07-24 17:00 |
| 28 | Create Reserve Inventory | 2013-07-25 → 2013-07-25 08:00 | 2013-07-30 → 2013-07-30 17:00 |
| 29 | Create Store | 2013-07-31 → 2013-07-31 08:00 | 2013-08-05 → 2013-08-05 17:00 |
| 30 | Create Character Tabs | 2013-08-06 → 2013-08-06 08:00 | 2013-08-06 → 2013-08-06 15:00 |
| 31 | Create Close Button | 2013-08-06 → 2013-08-06 15:00 | 2013-08-06 → 2013-08-06 17:00 |
| 32 | **Character Selection** | 2013-08-07 → 2013-08-07 08:00 | 2013-08-08 → 2013-08-08 15:00 |
| 33 | Create Class Tabs | 2013-08-07 → 2013-08-07 08:00 | 2013-08-07 → 2013-08-07 17:00 |
| 34 | Create Class Info Pane | 2013-08-08 → 2013-08-08 08:00 | 2013-08-08 → 2013-08-08 10:00 |
| 35 | Create Start Button | 2013-08-08 → 2013-08-08 10:00 | 2013-08-08 → 2013-08-08 12:00 |
| 36 | Create Close Button | 2013-08-08 → 2013-08-08 13:00 | 2013-08-08 → 2013-08-08 15:00 |
| 37 | **Classes** | 2013-07-01 → 2013-07-01 08:00 | 2013-08-02 → 2013-08-02 17:00 |
| 38 | **Create Warrior** | 2013-07-01 → 2013-07-01 08:00 | 2013-07-19 → 2013-07-19 17:00 |
| 39 | Create Skills | 2013-07-01 → 2013-07-01 08:00 | 2013-07-08 → 2013-07-08 17:00 |
| 40 | Create Attributes | 2013-07-09 → 2013-07-09 08:00 | 2013-07-16 → 2013-07-16 17:00 |
| 41 | Create Sprites | 2013-07-17 → 2013-07-17 08:00 | 2013-07-19 → 2013-07-19 17:00 |
| 42 | **Create Ranger** | 2013-07-22 → 2013-07-22 08:00 | 2013-07-26 → 2013-07-26 17:00 |
| 43 | Create Skills | 2013-07-22 → 2013-07-22 08:00 | 2013-07-22 → 2013-07-22 17:00 |
| 44 | Create Attributes | 2013-07-23 → 2013-07-23 08:00 | 2013-07-23 → 2013-07-23 17:00 |
| 45 | Create Sprites | 2013-07-24 → 2013-07-24 08:00 | 2013-07-26 → 2013-07-26 17:00 |
| 46 | **Create Cleric** | 2013-07-29 → 2013-07-29 08:00 | 2013-08-02 → 2013-08-02 17:00 |
| 47 | Create Skills | 2013-07-29 → 2013-07-29 08:00 | 2013-07-29 → 2013-07-29 17:00 |
| 48 | Create Attributes | 2013-07-30 → 2013-07-30 08:00 | 2013-07-30 → 2013-07-30 17:00 |
| 49 | Create Sprites | 2013-07-31 → 2013-07-31 08:00 | 2013-08-02 → 2013-08-02 17:00 |
| 50 | **Zones** | 2013-07-01 → 2013-07-01 08:00 | 2013-08-08 → 2013-08-08 17:00 |
| 51 | Create Terrain Tiles | 2013-07-01 → 2013-07-01 08:00 | 2013-07-12 → 2013-07-12 17:00 |
| 52 | Create World Map | 2013-07-15 → 2013-07-15 08:00 | 2013-07-16 → 2013-07-16 17:00 |
| 53 | Create Spawning Enemies | 2013-07-17 → 2013-07-17 08:00 | 2013-07-19 → 2013-07-19 17:00 |
| 54 | Create Interactable Store | 2013-07-22 → 2013-07-22 08:00 | 2013-07-22 → 2013-07-22 17:00 |
| 55 | Create Interactable Inn | 2013-07-23 → 2013-07-23 08:00 | 2013-07-23 → 2013-07-23 17:00 |
| 56 | Create NPCs | 2013-07-24 → 2013-07-24 08:00 | 2013-07-30 → 2013-07-30 17:00 |
| 57 | Create Quests | 2013-07-31 → 2013-07-31 08:00 | 2013-08-02 → 2013-08-02 17:00 |
| 58 | Create Bosses | 2013-08-05 → 2013-08-05 08:00 | 2013-08-08 → 2013-08-08 17:00 |
| 59 | **Battle System** | 2013-08-09 → 2013-08-09 08:00 | 2013-10-03 → 2013-10-03 17:00 |
| 60 | Create Turn Rotation | 2013-08-09 → 2013-08-09 08:00 | 2013-08-15 → 2013-08-15 17:00 |
| 61 | Create Damage System | 2013-08-16 → 2013-08-16 08:00 | 2013-08-22 → 2013-08-22 17:00 |
| 62 | Create Battle Effects | 2013-08-23 → 2013-08-23 08:00 | 2013-09-05 → 2013-09-05 17:00 |
| 63 | Create Loot System | 2013-09-06 → 2013-09-06 08:00 | 2013-09-19 → 2013-09-19 17:00 |
| 64 | Create Experience System | 2013-09-20 → 2013-09-20 08:00 | 2013-10-03 → 2013-10-03 17:00 |
| 65 | Integration/Testing/Polishing | 2013-10-04 → 2013-10-04 08:00 | 2013-10-25 → 2013-10-25 17:00 |

## Version 6 (saved 2013-07-19, file Senior Project Plan_7-19.mpp)

Note of the change: Project Plan

Last finish stays 2013-10-25.

Added:

| ID | Task | Duration | Start | Finish | Predecessors | Constraint | Resources |
| --- | --- | --- | --- | --- | --- | --- | --- |
| 9 | Start Button | 2h | 2013-07-03 09:00 | 2013-07-03 11:00 | 5, 4 | as late as possible | UI Programmer |
| 10 | Exit Button | 2h | 2013-07-03 11:00 | 2013-07-03 14:00 | 9 | as late as possible | UI Programmer |
| 11 | Mute Button | 1h | 2013-07-03 14:00 | 2013-07-03 15:00 | 10 | as late as possible | UI Programmer |
| 12 | Background/Title Image | 1h | 2013-07-03 15:00 | 2013-07-03 16:00 | 11 | as late as possible | UI Programmer |
| 17 | **GamePlay** | 18.25d | 2013-07-04 15:00 | 2013-07-30 17:00 |  | as late as possible |  |
| 32 | Create Enemy Positions' | 3d | 2013-07-31 08:00 | 2013-08-02 17:00 | 30 | as late as possible | UI Programmer |
| 33 | Create Party Member Postitions | 1d | 2013-08-05 08:00 | 2013-08-05 17:00 | 32 | as late as possible | UI Programmer |
| 34 | Create Status Bar | 1d | 2013-08-06 08:00 | 2013-08-06 17:00 | 33 | as late as possible | UI Programmer |
| 44 | Create Sprite | 3d | 2013-07-30 08:00 | 2013-08-01 17:00 | 43 | as late as possible | Lead Programmer; Programmer 1; programmer 3; Artist |
| 48 | Create Sprite | 3d | 2013-08-06 08:00 | 2013-08-08 17:00 | 47 | as late as possible | Lead Programmer; Programmer 1; programmer 3; Artist |
| 49 | **Create Zones** | 29d | 2013-07-01 08:00 | 2013-08-08 17:00 |  | as late as possible |  |
| 52 | Create Spawing Enemies | 3d | 2013-07-17 08:00 | 2013-07-19 17:00 | 51 | as late as possible | Programmer 2; programmer 4 |
| 55 | Create NPC's | 5d | 2013-07-24 08:00 | 2013-07-30 17:00 | 54 | as late as possible | Programmer 2; programmer 4 |
| 64 | Integration Testing/Polishing | 16d | 2013-10-04 08:00 | 2013-10-25 17:00 | 63 | as late as possible | Lead Programmer; Programmer 1; Programmer 2; programmer 3; programmer 4; UI Programmer |
| 65 | **Team Meetings** | 79.38d | 2013-07-08 08:00 | 2013-10-25 11:00 |  | as late as possible |  |
| 67 | Team Meetings 2 | 3h | 2013-07-12 08:00 | 2013-07-12 11:00 |  | start no later than 2013-07-12 08:00 |  |
| 68 | Team Meetings 3 | 3h | 2013-07-15 08:00 | 2013-07-15 11:00 |  | start no later than 2013-07-15 08:00 |  |
| 69 | Team Meetings 4 | 3h | 2013-07-19 08:00 | 2013-07-19 11:00 |  | start no later than 2013-07-19 08:00 |  |
| 72 | Team Meetings 7 | 3h | 2013-07-29 08:00 | 2013-07-29 11:00 |  | start no later than 2013-07-29 08:00 |  |
| 73 | Team Meetings 8 | 3h | 2013-08-02 08:00 | 2013-08-02 11:00 |  | start no later than 2013-08-02 08:00 |  |
| 74 | Team Meetings 9 | 3h | 2013-08-05 08:00 | 2013-08-05 11:00 |  | start no later than 2013-08-05 08:00 |  |
| 76 | Team Meetings 11 | 3h | 2013-08-12 08:00 | 2013-08-12 11:00 |  | start no later than 2013-08-12 08:00 |  |
| 77 | Team Meetings 12 | 3h | 2013-08-16 08:00 | 2013-08-16 11:00 |  | start no later than 2013-08-16 08:00 |  |
| 78 | Team Meetings 13 | 3h | 2013-08-19 08:00 | 2013-08-19 11:00 |  | start no later than 2013-08-19 08:00 |  |
| 79 | Team Meetings 14 | 3h | 2013-08-23 08:00 | 2013-08-23 11:00 |  | start no later than 2013-08-23 08:00 |  |
| 80 | Team Meetings 15 | 3h | 2013-08-26 08:00 | 2013-08-26 11:00 |  | start no later than 2013-08-26 08:00 |  |
| 82 | Team Meetings 17 | 3h | 2013-09-02 08:00 | 2013-09-02 11:00 |  | start no later than 2013-09-02 08:00 |  |
| 83 | Team Meetings 18 | 3h | 2013-09-06 08:00 | 2013-09-06 11:00 |  | start no later than 2013-09-06 08:00 |  |
| 84 | Team Meetings 19 | 3h | 2013-09-09 08:00 | 2013-09-09 11:00 |  | start no later than 2013-09-09 08:00 |  |
| 85 | Team Meetings 20 | 3h | 2013-09-13 08:00 | 2013-09-13 11:00 |  | start no later than 2013-09-13 08:00 |  |
| 86 | Team Meetings 21 | 3h | 2013-09-16 08:00 | 2013-09-16 11:00 |  | start no later than 2013-09-16 08:00 |  |
| 87 | Team Meetings 22 | 3h | 2013-09-20 08:00 | 2013-09-20 11:00 |  | start no later than 2013-09-20 08:00 |  |
| 88 | Team Meetings 23 | 3h | 2013-09-23 08:00 | 2013-09-23 11:00 |  | start no later than 2013-09-23 08:00 |  |
| 89 | Team Meetings 24 | 3h | 2013-09-27 08:00 | 2013-09-27 11:00 |  | start no later than 2013-09-27 08:00 |  |
| 90 | Team Meetings 25 | 3h | 2013-09-30 08:00 | 2013-09-30 11:00 |  | start no later than 2013-09-30 08:00 |  |
| 91 | Team Meetings 26 | 3h | 2013-10-04 08:00 | 2013-10-04 11:00 |  | start no later than 2013-10-04 08:00 |  |
| 92 | Team Meetings 27 | 3h | 2013-10-07 08:00 | 2013-10-07 11:00 |  | start no later than 2013-10-07 08:00 |  |
| 93 | Team Meetings 28 | 3h | 2013-10-11 08:00 | 2013-10-11 11:00 |  | start no later than 2013-10-11 08:00 |  |
| 94 | Team Meetings 29 | 3h | 2013-10-14 08:00 | 2013-10-14 11:00 |  | start no later than 2013-10-14 08:00 |  |
| 95 | Team Meetings 30 | 3h | 2013-10-18 08:00 | 2013-10-18 11:00 |  | start no later than 2013-10-18 08:00 |  |
| 96 | Team Meetings 31 | 3h | 2013-10-21 08:00 | 2013-10-21 11:00 |  | start no later than 2013-10-21 08:00 |  |
| 97 | Team Meetings 32 | 3h | 2013-10-25 08:00 | 2013-10-25 11:00 |  | start no later than 2013-10-25 08:00 |  |

Removed: 10 Create Exit Button; 11 Create Mute Button; 12 Create Background/Title Image; 13 Gameplay; 21 Create Enemy Positions; 22 Create Party Member Positions; 23 Create Status Bars; 49 Create Sprites; 53 Create Spawning Enemies; 56 Create NPCs; 66 Team Meeting; 67 Team Meeting 1; 68 Team Meeting 2; 69 Team Meeting 3; 70 Team Meeting 4; 71 Team Meeting 5; 72 Team Meeting 6; 73 Team Meeting 7; 74 Team Meeting 8; 75 Team Meeting 9; 76 Team Meeting 10; 77 Team Meeting 11; 78 Team Meeting 12; 79 Team Meeting 13; 80 Team Meeting 14; 81 Team Meeting 15; 82 Team Meeting 16; 83 Team Meeting 17; 84 Team Meeting 18; 85 Team Meeting 19; 86 Team Meeting 20; 87 Team Meeting 21; 88 Team Meeting 22; 89 Team Meeting 23; 90 Team Meeting 24; 91 Team Meeting 25; 92 Team Meeting 26; 93 Team Meeting 27; 94 Team Meeting 28; 95 Team Meeting 29; 96 Team Meeting 30; 97 Team Meeting 31; 98 Team Meeting 32

Changed:

| ID | Task | Start | Finish | Duration | Total float | Predecessors | Other |
| --- | --- | --- | --- | --- | --- | --- | --- |
| 1 | **Senior Project Demo** |  |  |  |  |  | constraint none → as late as possible |
| 2 | **Design** |  |  |  |  |  | constraint none → as late as possible |
| 3 | Create GDD |  |  |  |  |  | constraint none → as late as possible; resources Lead Programmer; Programmer 1; Programmer 2; Programmer 3; Programmer 4; UI Programmer → Lead Programmer; Programmer 1; Programmer 2; programmer 3; programmer 4; UI Programmer |
| 4 | Create TDD |  |  |  |  |  | constraint none → as late as possible; resources Lead Programmer; Programmer 1; Programmer 2; Programmer 3; Programmer 4; UI Programmer → Lead Programmer; Programmer 1; Programmer 2; programmer 3; programmer 4; UI Programmer |
| 5 | Learn AndEngine |  |  |  |  |  | constraint none → start no later than 2013-05-13 08:00 |
| 6 | **UI** | 2013-07-01 08:00 → 2013-07-03 09:00 (+2d) | 2013-08-08 15:00 → 2013-08-08 17:00 | 28.75d → 26.88d | 0.25d → 2.12d |  | constraint none → as late as possible |
| 7 | **Screens** | 2013-07-01 08:00 → 2013-07-03 09:00 (+2d) | 2013-08-08 15:00 → 2013-08-08 17:00 | 28.75d → 26.88d | 0.25d → 2.12d |  | constraint none → as late as possible |
| 8 | **Start** | 2013-07-01 08:00 → 2013-07-03 09:00 (+2d) | 2013-07-02 15:00 → 2013-07-03 16:00 (+1d) | 1.75d → 0.75d | 0.25d → 2.12d |  | constraint none → as late as possible |
| 13 | **Character Selection** | 2013-08-07 08:00 → 2013-07-03 16:00 (-35d) | 2013-08-08 15:00 → 2013-07-04 15:00 (-35d) | 1.75d → 0.88d | 0.25d → 2.12d |  | constraint none → as late as possible |
| 14 | Create Class Tabs | 2013-08-07 08:00 → 2013-07-03 16:00 (-35d) | 2013-08-07 17:00 → 2013-07-04 11:00 (-34d) | 1d → 4h | 0.25d → 2.12d | 30 → 8 | constraint none → as late as possible |
| 15 | Create Class Info Pane | 2013-08-08 08:00 → 2013-07-04 11:00 (-35d) | 2013-08-08 10:00 → 2013-07-04 14:00 (-35d) | 0.25d → 2h | 0.25d → 2.12d | 14 → 8, 14 | constraint none → as late as possible |
| 16 | Create Start Button | 2013-07-01 08:00 → 2013-07-04 14:00 (+3d) | 2013-07-01 10:00 → 2013-07-04 15:00 (+3d) | 0.25d → 1h | 0.25d → 2.12d | 3, 5 → 8, 15 | constraint none → as late as possible |
| 18 | **HUD** | 2013-07-02 15:00 → 2013-07-04 15:00 (+2d) | 2013-07-09 17:00 → 2013-07-11 17:00 (+2d) |  | 0.25d → 2.12d |  | constraint none → as late as possible |
| 19 | Create Character Portrait | 2013-07-02 15:00 → 2013-07-04 15:00 (+2d) | 2013-07-03 15:00 → 2013-07-05 15:00 (+2d) |  | 0.25d → 2.12d | Create Background/Title Image → 13 | constraint none → finish no later than 2013-07-22 17:00 |
| 20 | Create Joystick | 2013-07-03 15:00 → 2013-07-05 15:00 (+2d) | 2013-07-04 15:00 → 2013-07-08 15:00 (+4d) |  | 0.25d → 2.12d | 19 → 13, 19 | constraint none → as late as possible |
| 21 | Create Inventory Button | 2013-07-04 15:00 → 2013-07-08 15:00 (+4d) | 2013-07-05 17:00 → 2013-07-09 17:00 (+4d) |  | 0.25d → 2.12d | 20 → 13, 20 | constraint none → as late as possible |
| 22 | Create Map Button | 2013-07-08 08:00 → 2013-07-10 08:00 (+2d) | 2013-07-08 17:00 → 2013-07-10 17:00 (+2d) |  | 0.25d → 2.12d | 21 → 13, 21 | constraint none → as late as possible |
| 23 | Create Pause Popup | 2013-07-09 08:00 → 2013-07-11 08:00 (+2d) | 2013-07-09 17:00 → 2013-07-11 17:00 (+2d) |  | 0.25d → 2.12d | 22 → 13, 22 | constraint none → as late as possible |
| 24 | **Inventory** | 2013-07-19 08:00 → 2013-07-12 08:00 (-7d) | 2013-08-06 17:00 → 2013-07-30 17:00 (-7d) |  | 0.25d → 2.12d |  | constraint none → as late as possible |
| 25 | Create Player Stats | 2013-07-19 08:00 → 2013-07-12 08:00 (-7d) | 2013-07-19 17:00 → 2013-07-12 17:00 (-7d) |  | 0.25d → 2.12d | 35 → 13, 18 | constraint none → as late as possible |
| 26 | Create Player Equipped Items | 2013-07-22 08:00 → 2013-07-15 08:00 (-7d) | 2013-07-24 17:00 → 2013-07-17 17:00 (-7d) |  | 0.25d → 2.12d | 25 → 13, 25, 18 | constraint none → as late as possible |
| 27 | Create Reserve Inventory | 2013-07-25 08:00 → 2013-07-18 08:00 (-7d) | 2013-07-30 17:00 → 2013-07-23 17:00 (-7d) |  | 0.25d → 2.12d | 26 → 13, 18, 26 | constraint none → as late as possible |
| 28 | Create Store | 2013-07-31 08:00 → 2013-07-24 08:00 (-7d) | 2013-08-05 17:00 → 2013-07-29 17:00 (-7d) |  | 0.25d → 2.12d | 27 → 13, 18, 27 | constraint none → as late as possible |
| 29 | Create Character Tabs | 2013-08-06 08:00 → 2013-07-30 08:00 (-7d) | 2013-08-06 15:00 → 2013-07-30 15:00 (-7d) |  | 0.25d → 2.12d | 28 → 13, 18, 28 | constraint none → as late as possible |
| 30 | Create Close Button | 2013-08-06 15:00 → 2013-07-30 15:00 (-7d) | 2013-08-06 17:00 → 2013-07-30 17:00 (-7d) |  | 0.25d → 2.12d | 29 → 13, 18, 29 | constraint none → as late as possible |
| 31 | **Battle** | 2013-07-10 08:00 → 2013-07-31 08:00 (+21d) | 2013-07-18 17:00 → 2013-08-08 17:00 (+21d) |  | 0.25d → 2.12d |  | constraint none → as late as possible |
| 35 | Create Battle Menu | 2013-07-17 08:00 → 2013-08-07 08:00 (+21d) | 2013-07-18 17:00 → 2013-08-08 17:00 (+21d) |  | 0.25d → 2.12d | Create Status Bars → 34 | constraint none → as late as possible |
| 36 | **Classes** | 2013-07-01 08:00 → 2013-07-05 08:00 (+4d) | 2013-08-02 17:00 → 2013-08-08 17:00 (+6d) |  |  |  | constraint none → as late as possible |
| 37 | **Create Warrior** | 2013-07-01 08:00 → 2013-07-05 08:00 (+4d) | 2013-07-19 17:00 → 2013-07-25 17:00 (+6d) |  |  |  | constraint none → as late as possible |
| 38 | Create Skills | 2013-07-01 08:00 → 2013-07-05 08:00 (+4d) | 2013-07-08 17:00 → 2013-07-12 17:00 (+4d) |  |  | 3, 4, 5 → 5, 4 | constraint none → as late as possible; resources Programmer 3; Programmer 1; Lead Programmer → Lead Programmer; Programmer 1; programmer 3 |
| 39 | Create Attributes | 2013-07-09 08:00 → 2013-07-15 08:00 (+6d) | 2013-07-16 17:00 → 2013-07-22 17:00 (+6d) |  |  |  | constraint none → as late as possible; resources Programmer 3; Programmer 1; Lead Programmer → Lead Programmer; Programmer 1; programmer 3 |
| 40 | Create Sprite | 2013-07-01 08:00 → 2013-07-23 08:00 (+22d) | 2013-08-08 17:00 → 2013-07-25 17:00 (-14d) | 29d → 3d | 0d → 4d | none → 39 | was named Zones; constraint none → as late as possible; resources none → Lead Programmer; Programmer 1; programmer 3; Artist |
| 41 | **Create Ranger** | 2013-07-22 08:00 → 2013-07-26 08:00 (+4d) | 2013-07-26 17:00 → 2013-08-01 17:00 (+6d) |  |  |  | constraint none → as late as possible |
| 42 | Create Skills | 2013-07-22 08:00 → 2013-07-26 08:00 (+4d) | 2013-07-22 17:00 → 2013-07-26 17:00 (+4d) |  |  | 70 → 40 | constraint none → as late as possible; resources Programmer 3; Programmer 1; Lead Programmer → Lead Programmer; Programmer 1; programmer 3 |
| 43 | Create Attributes | 2013-07-23 08:00 → 2013-07-29 08:00 (+6d) | 2013-07-23 17:00 → 2013-07-29 17:00 (+6d) |  |  |  | constraint none → as late as possible; resources Programmer 3; Programmer 1; Lead Programmer → Lead Programmer; Programmer 1; programmer 3 |
| 45 | **Create Cleric** | 2013-07-29 08:00 → 2013-08-02 08:00 (+4d) | 2013-08-02 17:00 → 2013-08-08 17:00 (+6d) |  |  |  | constraint none → as late as possible |
| 46 | Create Skills | 2013-07-29 08:00 → 2013-08-02 08:00 (+4d) | 2013-07-29 17:00 → 2013-08-02 17:00 (+4d) |  |  | 66 → 44 | constraint none → as late as possible; resources Programmer 3; Programmer 1; Lead Programmer → Lead Programmer; Programmer 1; programmer 3 |
| 47 | Create Attributes | 2013-07-30 08:00 → 2013-08-05 08:00 (+6d) | 2013-07-30 17:00 → 2013-08-05 17:00 (+6d) |  |  |  | constraint none → as late as possible; resources Programmer 3; Programmer 1; Lead Programmer → Lead Programmer; Programmer 1; programmer 3 |
| 50 | Create Terrain Tiles |  |  |  |  | 3, 4, 5 → 5, 4 | constraint none → as late as possible; resources Programmer 2; Programmer 4 → Programmer 2; programmer 4 |
| 51 | Create World Map |  |  |  |  |  | constraint none → as late as possible; resources Programmer 2; Programmer 4 → Programmer 2; programmer 4 |
| 53 | Create Interactable Store |  |  |  |  | Create Spawning Enemies → 52 | constraint none → as late as possible; resources Programmer 2; Programmer 4 → Programmer 2; programmer 4 |
| 54 | Create Interactable Inn |  |  |  |  |  | constraint none → as late as possible; resources Programmer 2; Programmer 4 → Programmer 2; programmer 4 |
| 56 | Create Quests |  |  |  |  | Create NPCs → 55 | constraint none → as late as possible; resources Programmer 2; Programmer 4 → Programmer 2; programmer 4 |
| 57 | Create Bosses |  |  |  |  |  | constraint none → as late as possible; resources Programmer 2; Programmer 4 → Programmer 2; programmer 4 |
| 58 | **Battle System** |  |  |  |  |  | constraint none → as late as possible |
| 59 | Create Turn Rotation |  |  |  |  | 57, Create Sprites, 75 → 6, 36, 49 | constraint none → as late as possible; resources Lead Programmer; Programmer 1; Programmer 2; Programmer 3; Programmer 4 → Lead Programmer; Programmer 1; Programmer 2; programmer 3; programmer 4; UI Programmer |
| 60 | Create Damage System |  |  |  |  |  | constraint none → as late as possible; resources Lead Programmer; Programmer 1; Programmer 2; Programmer 3; Programmer 4 → Lead Programmer; Programmer 1; Programmer 2; programmer 3; programmer 4; UI Programmer |
| 61 | Create Battle Effects |  |  |  |  |  | constraint none → as late as possible; resources Lead Programmer; Programmer 1; Programmer 2; Programmer 3; Programmer 4 → Lead Programmer; Programmer 1; Programmer 2; programmer 3; programmer 4; UI Programmer |
| 62 | Create Loot System |  |  |  |  |  | constraint none → as late as possible; resources Lead Programmer; Programmer 1; Programmer 2; Programmer 3; Programmer 4 → Lead Programmer; Programmer 1; Programmer 2; programmer 3; programmer 4; UI Programmer |
| 63 | Create Experience System |  |  |  |  |  | constraint none → as late as possible; resources Lead Programmer; Programmer 1; Programmer 2; Programmer 3; Programmer 4 → Lead Programmer; Programmer 1; Programmer 2; programmer 3; programmer 4; UI Programmer |
| 66 | Team Meetings 1 | 2013-07-24 08:00 → 2013-07-08 08:00 (-16d) | 2013-07-26 17:00 → 2013-07-08 11:00 (-18d) | 3d → 3h | 4d → 40d | 43 → none | was named Create Sprites; constraint none → start no later than 2013-07-08 08:00; resources Artist 1 → none |
| 70 | Team Meetings 5 | 2013-07-17 08:00 → 2013-07-22 08:00 (+5d) | 2013-07-19 17:00 → 2013-07-22 11:00 (+3d) | 3d → 3h | 4d → 50d | 39 → none | was named Create Sprites; constraint none → start no later than 2013-07-22 08:00; resources Artist 1 → none |
| 71 | Team Meetings 6 | 2013-08-08 10:00 → 2013-07-26 08:00 (-13d) | 2013-08-08 12:00 → 2013-07-26 11:00 (-13d) | 0.25d → 3h | 0.25d → 54d | 15 → none | was named Create Start Button; constraint none → start no later than 2013-07-26 08:00; resources UI Programmer → none |
| 75 | Team Meetings 10 | 2013-08-08 13:00 → 2013-08-09 08:00 (+1d) | 2013-08-08 15:00 → 2013-08-09 11:00 (+1d) | 0.25d → 3h | 0.25d → 64d | 71 → none | was named Create Close Button; constraint none → start no later than 2013-08-09 08:00; resources UI Programmer → none |
| 81 | Team Meetings 16 | 2013-10-04 08:00 → 2013-08-30 08:00 (-35d) | 2013-10-25 17:00 → 2013-08-30 11:00 (-56d) | 16d → 3h | 0d → 79d | 63 → none | was named Integration/Testing/Polishing; constraint none → start no later than 2013-08-30 08:00; resources Lead Programmer; Programmer 1; Programmer 2; Programmer 3; Programmer 4 → none |

## Version 7 (saved 2013-07-19, file Senior Project Plan_7-19.mpp)

Note of the change: Updated project plan

Last finish stays 2013-10-25. Complete tasks 0 → 12.

Changed:

| ID | Task | Start | Finish | Duration | Complete | Total float | Predecessors | Other |
| --- | --- | --- | --- | --- | --- | --- | --- | --- |
| 1 | **Senior Project Demo** | 2013-05-13 08:00 A |  |  | 0% → 31% |  |  |  |
| 2 | **Design** | 2013-05-13 08:00 A |  |  | 0% → 86% |  |  |  |
| 3 | Create GDD | 2013-05-13 08:00 A | 2013-05-31 17:00 A |  | 0% → 100% | 0d → none |  |  |
| 4 | Create TDD | 2013-06-03 08:00 A |  |  | 0% → 75% |  |  |  |
| 5 | Learn AndEngine | 2013-05-13 08:00 A |  |  | 0% → 65% |  |  |  |
| 6 | **UI** | 2013-07-03 09:00 A |  |  | 0% → 11% | 2.12d → 0d |  |  |
| 7 | **Screens** | 2013-07-03 09:00 A |  |  | 0% → 11% | 2.12d → 0d |  |  |
| 8 | **Start** | 2013-07-03 09:00 A | 2013-07-03 16:00 → 2013-08-08 17:00 (+36d) | 0.75d → 26.88d | 0% → 86% | 2.12d → 0d |  |  |
| 9 | Start Button | 2013-07-03 09:00 A | 2013-07-03 11:00 A | 2h → 0.25d | 0% → 100% | 2.12d → none |  |  |
| 10 | Exit Button | 2013-07-03 11:00 A | 2013-07-03 14:00 A | 2h → 0.25d | 0% → 100% | 2.12d → none |  |  |
| 11 | Mute Button | 2013-07-03 14:00 → 2013-08-08 15:00 (+36d) | 2013-07-03 15:00 → 2013-08-08 17:00 (+36d) | 1h → 0.25d |  | 2.12d → 26.12d |  |  |
| 12 | Background/Title Image | 2013-07-03 15:00 A | 2013-07-03 16:00 → 2013-08-08 17:00 A (+36d) | 1h → 1d | 0% → 100% | 2.12d → none |  |  |
| 13 | **Character Selection** | 2013-07-03 16:00 → 2013-07-03 10:00 A | 2013-07-04 15:00 A | 0.88d → 1.5d | 0% → 100% | 2.12d → none |  |  |
| 14 | Create Class Tabs | 2013-07-03 16:00 → 2013-07-03 10:00 A | 2013-07-04 11:00 → 2013-07-04 10:00 A | 4h → 1d | 0% → 100% | 2.12d → none | 8 → 12 |  |
| 15 | Create Class Info Pane | 2013-07-04 11:00 → 2013-07-04 10:00 A | 2013-07-04 14:00 → 2013-07-04 12:00 A | 2h → 0.25d | 0% → 100% | 2.12d → none | 8, 14 → 14 |  |
| 16 | Create Start Button | 2013-07-04 14:00 → 2013-07-04 13:00 A | 2013-07-04 15:00 A | 1h → 0.25d | 0% → 100% | 2.12d → none | 8, 15 → 15 |  |
| 17 | **GamePlay** | 2013-07-04 15:00 → 2013-07-03 16:00 (-1d) | 2013-07-30 17:00 → 2013-07-30 09:00 |  |  | 2.12d → -0.88d |  |  |
| 18 | **HUD** | 2013-07-04 15:00 → 2013-07-03 16:00 (-1d) | 2013-07-11 17:00 → 2013-07-11 09:00 |  |  | 2.12d → -0.88d |  |  |
| 19 | Create Character Portrait | 2013-07-04 15:00 → 2013-07-03 16:00 (-1d) | 2013-07-05 15:00 → 2013-07-04 16:00 (-1d) |  |  | 2.12d → -0.88d |  | constraint finish no later than 2013-07-22 17:00 → none |
| 20 | Create Joystick | 2013-07-05 15:00 → 2013-07-04 16:00 (-1d) | 2013-07-08 15:00 → 2013-07-05 16:00 (-3d) |  |  | 2.12d → -0.88d |  |  |
| 21 | Create Inventory Button | 2013-07-08 15:00 → 2013-07-05 16:00 (-3d) | 2013-07-09 17:00 → 2013-07-09 09:00 |  |  | 2.12d → -0.88d |  |  |
| 22 | Create Map Button | 2013-07-10 08:00 → 2013-07-09 09:00 (-1d) | 2013-07-10 17:00 → 2013-07-10 09:00 |  |  | 2.12d → -0.88d |  |  |
| 23 | Create Pause Popup | 2013-07-11 08:00 → 2013-07-10 09:00 (-1d) | 2013-07-11 17:00 → 2013-07-11 09:00 |  |  | 2.12d → -0.88d |  |  |
| 24 | **Inventory** | 2013-07-12 08:00 → 2013-07-11 09:00 (-1d) | 2013-07-30 17:00 → 2013-07-30 09:00 |  |  | 2.12d → -0.88d |  |  |
| 25 | Create Player Stats | 2013-07-12 08:00 → 2013-07-11 09:00 (-1d) | 2013-07-12 17:00 → 2013-07-12 09:00 |  |  | 2.12d → -0.88d |  |  |
| 26 | Create Player Equipped Items | 2013-07-15 08:00 → 2013-07-12 09:00 (-3d) | 2013-07-17 17:00 → 2013-07-17 09:00 |  |  | 2.12d → -0.88d |  |  |
| 27 | Create Reserve Inventory | 2013-07-18 08:00 → 2013-07-17 09:00 (-1d) | 2013-07-23 17:00 → 2013-07-23 09:00 |  |  | 2.12d → -0.88d |  |  |
| 28 | Create Store | 2013-07-24 08:00 → 2013-07-23 09:00 (-1d) | 2013-07-29 17:00 → 2013-07-29 09:00 |  |  | 2.12d → -0.88d |  |  |
| 29 | Create Character Tabs | 2013-07-30 08:00 → 2013-07-29 09:00 (-1d) | 2013-07-30 15:00 → 2013-07-29 16:00 (-1d) |  |  | 2.12d → -0.88d |  |  |
| 30 | Create Close Button | 2013-07-30 15:00 → 2013-07-29 16:00 (-1d) | 2013-07-30 17:00 → 2013-07-30 09:00 |  |  | 2.12d → -0.88d |  |  |
| 31 | **Battle** | 2013-07-31 08:00 → 2013-07-30 09:00 (-1d) | 2013-08-08 17:00 → 2013-08-08 09:00 |  |  | 2.12d → -0.88d |  |  |
| 32 | Create Enemy Positions' | 2013-07-31 08:00 → 2013-07-30 09:00 (-1d) | 2013-08-02 17:00 → 2013-08-02 09:00 |  |  | 2.12d → -0.88d |  |  |
| 33 | Create Party Member Postitions | 2013-08-05 08:00 → 2013-08-02 09:00 (-3d) | 2013-08-05 17:00 → 2013-08-05 09:00 |  |  | 2.12d → -0.88d |  |  |
| 34 | Create Status Bar | 2013-08-06 08:00 → 2013-08-05 09:00 (-1d) | 2013-08-06 17:00 → 2013-08-06 09:00 |  |  | 2.12d → -0.88d |  |  |
| 35 | Create Battle Menu | 2013-08-07 08:00 → 2013-08-06 09:00 (-1d) | 2013-08-08 17:00 → 2013-08-08 09:00 |  |  | 2.12d → -0.88d |  |  |
| 36 | **Classes** | 2013-07-05 08:00 A |  |  | 0% → 44% | 4d → 0d |  |  |
| 37 | **Create Warrior** | 2013-07-05 08:00 A |  |  | 0% → 73% | 4d → 0d |  |  |
| 38 | Create Skills | 2013-07-05 08:00 A | 2013-07-12 17:00 A |  | 0% → 100% | 4d → none |  |  |
| 39 | Create Attributes | 2013-07-15 08:00 A |  |  | 0% → 83% | 4d → 0d |  |  |
| 65 | **Team Meetings** | 2013-07-08 08:00 A |  |  | 0% → 13% | 40d → 70d |  |  |
| 66 | Team Meetings 1 | 2013-07-08 08:00 A | 2013-07-08 11:00 A |  | 0% → 100% | 40d → none |  |  |
| 67 | Team Meetings 2 | 2013-07-12 08:00 A | 2013-07-12 11:00 A |  | 0% → 100% | 44d → none |  |  |
| 68 | Team Meetings 3 | 2013-07-15 08:00 A | 2013-07-15 11:00 A |  | 0% → 100% | 45d → none |  |  |
| 69 | Team Meetings 4 | 2013-07-19 08:00 A | 2013-07-19 11:00 A |  | 0% → 100% | 49d → none |  |  |
